# WBS Detallado

How a schedule from MS Project changed from version to version. A marks actual dates.

## Version 1 (saved 2013-04-16, file ITFC _Crong_v1.1 - Cronograma Detallado.mpp)

Note of the change: PP_PMC

| ID | WBS | Task | Duration | Start | Finish | Complete | Total float | Constraint |
| --- | --- | --- | --- | --- | --- | --- | --- | --- |
| 1 | 1 | **SGTP** | 88d | 2013-02-05 | 2013-06-06 | 89% |  |  |
| 2 | 1.1 | **Iteracion 1** | 13d | 2013-02-05 | 2013-02-21 | 73% |  |  |
| 3 | 1.1.1 | **Planificación** | 6d | 2013-02-05 A | 2013-02-12 | 67% |  |  |
| 4 |  | Plan de Proyecto | 3d | 2013-02-05 A | 2013-02-07 | 33% | 85d | finish no earlier than 2013-02-07 |
| 5 |  | Cronograma Detallado | 1d | 2013-02-07 A | 2013-02-07 A | 100% |  | finish no earlier than 2012-09-04 |
| 6 |  | Informe Semanal | 1d | 2013-02-07 A | 2013-02-07 A | 100% |  | finish no earlier than 2012-09-04 |
| 7 |  | Actas de Reuniones | 1d | 2013-02-07 A | 2013-02-07 A | 100% |  | finish no earlier than 2012-09-05 |
| 8 | 1.1.2 | **Analisis de Riesgos** | 1d | 2012-09-06 A | 2012-09-06 A | 100% |  |  |
| 9 |  | Registro de Riesgos | 1d | 2012-09-06 A | 2012-09-06 A | 100% |  | finish no earlier than 2012-09-06 |
| 10 | 1.1.3 | **Ingeniería** | 3d | 2013-02-07 A | 2013-02-11 | 100% |  |  |
| 11 |  | Modelaje Base de Datos | 1d | 2013-02-07 A | 2013-02-07 A | 100% |  | finish no earlier than 2012-09-11 |
| 12 |  | Desarrollo de Prototipos Interfaces | 2d | 2013-02-07 A | 2013-02-08 A | 100% |  | finish no earlier than 2012-09-11 |
| 13 | 1.1.4 | **Evaluación del Cliente** | 3d | 2013-02-19 A | 2013-02-21 | 60% |  |  |
| 14 |  | Kick Off Metting Interno | 1d | 2013-02-19 A | 2013-02-19 A | 100% |  | start no earlier than 2012-09-12 |
| 15 |  | Kick Off Metting Externo | 1d | 2013-02-19 A | 2013-02-19 A | 100% |  | finish no earlier than 2012-09-13 |
| 16 |  | Acta de Aceptacion de Entregables | 3d | 2013-02-19 A | 2013-02-21 | 33% | 75d | finish no earlier than 2013-02-21 |
| 17 | 1.2 | **Iteracion 2** | 14d | 2013-02-21 | 2013-03-12 | 96% |  |  |
| 18 | 1.2.1 | **Planificación** | 2d | 2013-02-22 | 2013-02-25 | 88% |  |  |
| 19 |  | Documentos de Arquitectura de Software | 1d | 2013-02-22 A | 2013-02-22 A | 100% |  | start no earlier than 2012-09-14 |
| 20 |  | Casos de Uso | 1d | 2013-02-22 A | 2013-02-22 A | 100% |  | finish no earlier than 2012-09-15 |
| 21 |  | Diagrama de Casos de Uso | 1d | 2013-02-22 A | 2013-02-22 A | 100% |  | finish no earlier than 2012-09-15 |
| 22 |  | Lista Maestra de Requerimientos | 2d | 2013-02-22 A | 2013-02-25 | 50% | 73d | finish no earlier than 2013-02-24 |
| 23 |  | Matriz de Trazabilidad | 1d | 2013-02-22 A | 2013-02-22 A | 100% |  | finish no earlier than 2012-09-16 |
| 24 |  | Informe Semanal | 1d | 2013-02-22 A | 2013-02-22 A | 100% |  | finish no earlier than 2012-09-17 |
| 25 |  | Actas de Reuniones | 1d | 2012-09-25 A | 2012-09-25 A | 100% |  | finish no earlier than 2012-09-18 |
| 26 | 1.2.2 | **Análisis de Riesgos** | 2d | 2012-09-19 A | 2012-09-20 A | 100% |  |  |
| 27 |  | Registros de Riesgos | 2d | 2012-09-19 A | 2012-09-20 A | 100% |  | finish no earlier than 2012-09-20 |
| 28 | 1.2.3 | **Ingeniería** | 11d | 2012-09-21 A | 2012-10-05 A | 100% |  |  |
| 29 |  | Desarrollo de Logica de Negocio | 11d | 2012-09-21 A | 2012-10-05 A | 100% |  | finish no earlier than 2012-10-05 |
| 30 | 1.2.4 | **Evaluación del Cliente** | 2d | 2012-10-08 A | 2012-10-09 A | 100% |  |  |
| 31 |  | Acta de Aceptacion de Entregables | 2d | 2012-10-08 A | 2012-10-09 A | 100% |  | finish no earlier than 2012-10-09 |
| 32 | 1.3 | **Iteración 3** | 25d | 2012-10-10 A | 2012-11-13 A | 100% |  |  |
| 33 | 1.3.1 | **Planificación** | 2d | 2012-10-10 A | 2012-10-12 A | 100% |  |  |
| 34 |  | Casos de Uso | 1d | 2012-10-10 A | 2012-10-10 A | 100% |  | start no earlier than 2012-10-10 |
| 35 |  | Diagrama de Casos de Uso | 1d | 2012-10-10 A | 2012-10-11 A | 100% |  | finish no earlier than 2012-10-11 |
| 36 |  | Lista Maestra de Requerimientos Actualizada | 1d | 2012-10-10 A | 2012-10-11 A | 100% |  | finish no earlier than 2012-10-11 |
| 37 |  | Matriz de Trazabilidad Actualizada | 1d | 2012-10-11 A | 2012-10-12 A | 100% |  | finish no earlier than 2012-10-12 |
| 38 | 1.3.2 | **Análisis de Riesgos** | 3d | 2012-10-15 A | 2012-10-17 A | 100% |  |  |
| 39 |  | Registros de Riesgos | 1d | 2012-10-15 A | 2012-10-16 A | 100% |  | finish no earlier than 2012-10-16 |
| 40 |  | Planes de Prueba | 2d | 2012-10-16 A | 2012-10-17 A | 100% |  | finish no earlier than 2012-10-17 |
| 41 | 1.3.3 | **Ingeniería** | 16d | 2012-10-18 A | 2012-11-08 A | 100% |  |  |
| 42 |  | Desarrollo de Persistencia | 16d | 2012-10-18 A | 2012-11-08 A | 100% |  | finish no earlier than 2012-11-08 |
| 43 | 1.3.4 | **Evaluación del Cliente** | 4d | 2012-11-08 A | 2012-11-13 A | 100% |  |  |
| 44 |  | Acta de Aceptacion de Entregables | 1d | 2012-11-08 A | 2012-11-09 A | 100% |  | finish no earlier than 2012-11-09 |
| 45 |  | Pruebas Funcionales | 3d | 2012-11-09 A | 2012-11-13 A | 100% |  | finish no earlier than 2012-11-13 |
| 46 | 1.4 | **Iteración 4** | 25d | 2012-11-14 A | 2012-12-18 | 81% | 122d |  |
| 47 | 1.4.1 | **Planificación** | 3d | 2012-11-14 A | 2012-11-16 A | 100% |  |  |
| 48 |  | Manual de Usuario | 1d | 2012-11-14 A | 2012-11-15 A | 100% |  | finish no earlier than 2012-11-15 |
| 49 |  | Informe Semanal | 1d | 2012-11-14 A | 2012-11-15 A | 100% |  | finish no earlier than 2012-11-15 |
| 50 |  | Actas de Reuniones | 2d | 2012-11-15 A | 2012-11-16 A | 100% |  | finish no earlier than 2012-11-16 |
| 51 | 1.4.2 | **Análisis de Riesgos** | 5d | 2012-11-19 A | 2012-11-23 A | 100% |  |  |
| 52 |  | Registro de Riesgos | 1d | 2012-11-19 A | 2012-11-19 A | 100% |  | start no earlier than 2012-11-19 |
| 53 |  | Plan de Capacitación | 5d | 2012-11-19 A | 2012-11-23 A | 100% |  | finish no earlier than 2012-11-23 |
| 54 | 1.4.3 | **Ingeniería** | 12d | 2012-11-26 A | 2012-12-11 A | 100% |  |  |
| 55 |  | Pruebas Unitarias | 4d | 2012-11-26 A | 2012-11-30 A | 100% |  | finish no earlier than 2012-11-30 |
| 56 |  | Pruebas Integrales | 3d | 2012-12-03 A | 2012-12-05 A | 100% |  | finish no earlier than 2012-12-05 |
| 57 |  | Pruebas en Producción | 2d | 2012-12-06 A | 2012-12-07 A | 100% |  | finish no earlier than 2012-12-07 |
| 58 |  | Implementación | 2d | 2012-12-10 A | 2012-12-11 A | 100% |  | finish no earlier than 2012-12-21 |
| 59 | 1.4.4 | **Evaluación del Cliente** | 5d | 2012-12-12 | 2012-12-18 |  |  |  |
| 60 |  | Acta de Conformidad de Capacitacion | 1d | 2012-12-12 | 2012-12-12 |  | 126d | finish no earlier than 2012-12-12 |
| 61 |  | Soporte | 3d | 2012-12-13 | 2012-12-17 |  |  | finish no earlier than 2012-12-24 |
| 62 |  | Acta de Finalización del Proyecto | 1d | 2012-12-18 | 2012-12-18 |  | 122d | finish no earlier than 2012-12-18 |

## Version 2 (saved 2013-04-18, file ITFC.PP.PMC.R02 - Crongv2.1 .mpp)

Note of the change: PP_PMC

Last finish stays 2013-06-06. Complete tasks 35 → 23.

Added:

| ID | Task | Duration | Start | Finish | Predecessors | Constraint | Resources |
| --- | --- | --- | --- | --- | --- | --- | --- |
| 30 | Kick Off Metting Interno | 1d | 2013-03-25 | 2013-03-25 |  | finish no earlier than 2013-03-25 | Arnold Paico |
| 31 | Kick Off Metting Externo | 1d | 2013-03-26 | 2013-03-26 | 30 |  | Arnold Paico; Manuel Saenz |
| 35 | Herramienta de Gestión | 3d | 2013-03-27 | 2013-03-29 |  |  |  |
| 36 | Numero de no Conformidades (Metrica) | 1d | 2013-03-30 | 2013-03-30 | 35 | start no earlier than 2013-03-30 |  |
| 37 | Checklist de Aseguramiento de Calidad | 1d | 2013-04-01 | 2013-04-01 | 36 |  |  |
| 38 | Matriz de Seguimiento | 1d | 2013-04-02 | 2013-04-02 | 37 |  |  |
| 50 | Métricas de Calidad | 1d? | 2013-04-11 | 2013-04-11 |  |  |  |
| 51 | Plantilla Ficha Indicador | 1d? | 2013-04-11 | 2013-04-11 |  |  |  |

Removed: 19 Documentos de Arquitectura de Software; 34 Casos de Uso; 35 Diagrama de Casos de Uso; 37 Matriz de Trazabilidad Actualizada

Changed:

| ID | Task | Start | Finish | Duration | Complete | Total float | Predecessors | Other |
| --- | --- | --- | --- | --- | --- | --- | --- | --- |
| 1 | **Sistema de Intranet de Alumnos - S.I.A** |  |  | 88d → 95d | 89% → 55% |  |  | was named SGTP |
| 2 | **Iteracion 1** | 2013-02-05 A | 2013-02-21 → 2013-03-05 (+12d) | 13d → 24d | 73% → 33% |  |  |  |
| 3 | **Planificación** |  | 2013-02-12 → 2013-02-11 (-1d) |  | 67% → 25% |  |  | resources none → Amira Lanao |
| 4 | Plan de Proyecto |  | 2013-02-07 → 2013-02-08 (+1d) | 3d → 4d | 33% → 25% | 85d → 91d |  | resources none → Amira Lanao; Arnold Paico; Gino Guzman; Michel Aguilar |
| 5 | Cronograma Detallado | 2013-02-07 A → 2013-02-08 A (+1d) | 2013-02-07 A → 2013-02-09 (+2d) | 1d → 2d | 100% → 50% | none → 90d |  | constraint finish no earlier than 2012-09-04 → finish no earlier than 2013-02-09; resources none → Gino Guzman; Michel Aguilar |
| 6 | Informe Semanal | 2013-02-07 A → 2013-02-09 A (+2d) | 2013-02-07 A → 2013-02-09 (+2d) |  | 100% → 0% | none → 90d |  | resources none → Arnold Paico |
| 7 | Actas de Reuniones | 2013-02-07 A → 2013-02-08 A (+1d) | 2013-02-07 A → 2013-02-08 (+1d) |  | 100% → 0% | none → 91d |  | constraint finish no earlier than 2012-09-05 → finish no earlier than 2013-02-08; resources none → Arnold Paico |
| 8 | **Analisis de Riesgos** | 2012-09-06 A → 2013-02-09 A (+156d) | 2012-09-06 A → 2013-02-09 A (+156d) |  |  |  |  | resources none → Gino Guzman |
| 9 | Registro de Riesgos | 2012-09-06 A → 2013-02-09 A (+156d) | 2012-09-06 A → 2013-02-09 A (+156d) |  |  |  |  | constraint finish no earlier than 2012-09-06 → finish no earlier than 2013-02-09 |
| 10 | **Ingeniería** | 2013-02-07 A → 2013-02-11 A (+4d) | 2013-02-11 → 2013-02-23 (+12d) | 3d → 12d | 100% → 18% |  |  | resources none → Michel Aguilar |
| 11 | Modelaje Base de Datos | 2013-02-07 A → 2013-02-11 A (+4d) | 2013-02-07 A → 2013-02-16 (+9d) | 1d → 6d | 100% → 8% | none → 84d |  | constraint finish no earlier than 2012-09-11 → finish no earlier than 2013-02-16; resources none → Michel Aguilar; Arnold Paico |
| 12 | Desarrollo de Prototipos Interfaces | 2013-02-07 A → 2013-02-15 A (+8d) | 2013-02-08 A → 2013-02-23 (+15d) | 2d → 8d | 100% → 25% | none → 78d |  | constraint finish no earlier than 2012-09-11 → finish no earlier than 2013-02-23; resources none → Gino Guzman; Michel Aguilar |
| 13 | **Evaluación del Cliente** | 2013-02-19 A → 2013-03-04 A (+13d) | 2013-02-21 → 2013-03-05 (+12d) | 3d → 2d | 60% → 99% |  |  | resources none → Amira Lanao; Manuel Saenz |
| 14 | Kick Off Metting Interno | 2013-02-19 A → 2013-03-04 A (+13d) | 2013-02-19 A → 2013-03-04 A (+13d) |  |  |  |  | resources none → Arnold Paico |
| 15 | Kick Off Metting Externo | 2013-02-19 A → 2013-03-05 A (+14d) | 2013-02-19 A → 2013-03-05 A (+14d) |  |  |  | none → 14 | resources none → Arnold Paico; Manuel Saenz |
| 16 | Acta de Aceptacion de Entregables | 2013-02-19 A → 2013-03-05 A (+14d) | 2013-02-21 → 2013-03-05 A (+12d) | 3d → 1d | 33% → 100% | 75d → none | none → 15 | resources none → Arnold Paico; Manuel Saenz |
| 17 | **Iteracion 2** | 2013-02-21 → 2013-03-06 (+13d) | 2013-03-12 → 2013-03-26 (+14d) | 14d → 18d | 96% → 63% |  |  |  |
| 18 | **Planificación** | 2013-02-22 → 2013-02-13 A (-9d) | 2013-02-25 → 2013-03-16 (+19d) | 2d → 27d | 88% → 56% |  |  | resources none → Amira Lanao |
| 19 | Lista Maestra de Requerimientos | 2013-02-22 A → 2013-03-06 A (+12d) | 2013-02-25 → 2013-03-09 (+12d) | 2d → 4d | 50% → 25% | 73d → 67d |  | constraint finish no earlier than 2013-02-24 → finish no earlier than 2013-03-09; resources none → Gino Guzman |
| 20 | Matriz de Trazabilidad | 2013-02-22 A → 2013-03-11 A (+17d) | 2013-02-22 A → 2013-03-11 A (+17d) |  |  |  | none → 19 | resources none → Gino Guzman |
| 21 | Casos de Uso | 2013-02-22 A → 2013-03-12 A (+18d) | 2013-02-22 A → 2013-03-12 A (+18d) |  |  |  |  | resources none → Michel Aguilar |
| 22 | Diagrama de Casos de Uso | 2013-02-22 A → 2013-02-13 A (-9d) | 2013-02-22 A → 2013-02-13 A (-9d) |  |  |  | none → 21 | resources none → Michel Aguilar |
| 23 | Informe Semanal | 2013-02-22 A → 2013-03-16 (+22d) | 2013-02-22 A → 2013-03-16 (+22d) |  | 100% → 0% | none → 61d |  | constraint finish no earlier than 2012-09-17 → finish no earlier than 2013-03-16; resources none → Arnold Paico |
| 24 | Actas de Reuniones | 2012-09-25 A → 2013-03-15 A (+171d) | 2012-09-25 A → 2013-03-15 A (+171d) |  |  |  |  | resources none → Arnold Paico |
| 25 | **Análisis de Riesgos** | 2012-09-19 A → 2013-03-14 A (+176d) | 2012-09-20 A → 2013-03-14 A (+175d) | 2d → 1d |  |  |  | resources none → Gino Guzman |
| 26 | Registros de Riesgos | 2012-09-19 A → 2013-03-14 A (+176d) | 2012-09-20 A → 2013-03-14 A (+175d) | 2d → 1d |  |  |  | resources none → Gino Guzman; Michel Aguilar |
| 27 | **Ingeniería** | 2012-09-21 A → 2013-03-18 A (+178d) | 2012-10-05 A → 2013-03-23 (+169d) | 11d → 6d | 100% → 83% |  |  | resources none → Michel Aguilar |
| 28 | Desarrollo de Logica de Negocio | 2012-09-21 A → 2013-03-18 A (+178d) | 2012-10-05 A → 2013-03-23 (+169d) | 11d → 6d | 100% → 83% | none → 55d |  | constraint finish no earlier than 2012-10-05 → finish no earlier than 2013-03-23; resources none → Arnold Paico; Gino Guzman; Michel Aguilar |
| 29 | **Evaluación del Cliente** | 2012-10-08 A → 2013-03-25 A (+168d) | 2012-10-09 A → 2013-03-26 (+168d) |  | 100% → 33% |  |  | resources none → Amira Lanao; Manuel Saenz |
| 32 | Acta de Aceptacion de Entregables | 2012-10-08 A → 2013-03-26 A (+169d) | 2012-10-09 A → 2013-03-26 A (+168d) | 2d → 1d |  |  | none → 31 | resources none → Arnold Paico; Manuel Saenz |
| 33 | **Iteración 3** | 2012-10-10 A → 2013-03-27 A (+168d) | 2012-11-13 A → 2013-04-11 (+149d) | 25d → 13d | 100% → 47% |  |  |  |
| 34 | **Planificación** | 2012-10-10 A → 2013-03-27 A (+168d) | 2012-10-12 A → 2013-04-02 (+172d) | 2d → 6d | 100% → 0% |  |  |  |
| 39 | Lista Maestra de Requerimientos Actualizada | 2012-10-10 A → 2013-03-28 A (+169d) | 2012-10-11 A → 2013-03-28 (+168d) |  | 100% → 0% | none → 51d |  | constraint finish no earlier than 2012-10-11 → finish no earlier than 2013-03-27 |
| 40 | **Análisis de Riesgos** | 2012-10-15 A → 2013-04-03 A (+170d) | 2012-10-17 A → 2013-04-05 (+170d) |  | 100% → 67% |  |  |  |
| 41 | Registros de Riesgos | 2012-10-15 A → 2013-04-03 A (+170d) | 2012-10-16 A → 2013-04-03 A (+169d) |  |  |  |  | constraint finish no earlier than 2012-10-16 → finish no earlier than 2013-04-03 |
| 42 | Planes de Prueba | 2012-10-16 A → 2013-04-04 A (+170d) | 2012-10-17 A → 2013-04-05 (+170d) |  | 100% → 50% | none → 44d |  |  |
| 43 | **Ingeniería** | 2012-10-18 A → 2013-04-05 A (+169d) | 2012-11-08 A → 2013-04-09 A (+152d) | 16d → 3d |  |  |  |  |
| 44 | Desarrollo de Persistencia | 2012-10-18 A → 2013-04-05 A (+169d) | 2012-11-08 A → 2013-04-09 A (+152d) | 16d → 3d |  |  |  |  |
| 45 | **Evaluación del Cliente** | 2012-11-08 A → 2013-04-11 A (+154d) | 2012-11-13 A → 2013-04-11 A (+149d) | 4d → 1d |  |  |  |  |
| 46 | Acta de Aceptacion de Entregables | 2012-11-08 A → 2013-04-11 A (+154d) | 2012-11-09 A → 2013-04-11 A (+153d) |  |  |  |  |  |
| 47 | Pruebas Funcionales | 2012-11-09 A → 2013-04-11 A (+153d) | 2012-11-13 A → 2013-04-11 A (+149d) | 3d → 1d |  |  |  |  |
| 48 | **Iteración 4(FaltaCorregir)** | 2012-11-14 A → 2013-04-11 (+148d) | 2012-12-18 → 2013-04-18 (+121d) | 25d → 6d | 81% → 75% | 122d → none |  | was named Iteración 4 |
| 49 | **Planificación** |  | 2012-11-16 A → 2013-04-11 (+146d) | 3d → 114d? | 100% → 67% | none → 5d |  |  |
| 52 | Manual de Usuario |  | 2012-11-15 A → 2012-11-14 A (-1d) |  |  |  |  |  |
| 53 | Informe Semanal |  | 2012-11-15 A → 2012-11-14 A (-1d) |  |  |  |  |  |
| 59 | Pruebas Unitarias |  | 2012-11-30 A → 2012-11-29 A (-1d) |  |  |  |  |  |

## Version 3 (saved 2013-04-21, file ITFC.PP.PMC.R02 - Crongv2.1 .mpp)

Note of the change: cronograma

Last finish stays 2013-06-06.

Removed: 7 Actas de Reuniones

Changed:

| ID | Task | Start | Finish | Complete | Other |
| --- | --- | --- | --- | --- | --- |
| 1 | **Sistema de Intranet de Alumnos - S.I.A** |  |  | 55% → 56% |  |
| 2 | **Iteracion 1** |  |  | 33% → 34% |  |
| 3 | **Planificación** |  |  | 25% → 29% |  |
| 6 | Informe Quincenal |  |  |  | was named Informe Semanal |
| 13 | Actas de Seguimiento Interno | 2013-03-04 A → 2013-03-08 A (+4d) | 2013-03-04 A → 2013-03-08 A (+4d) |  | was named Kick Off Metting Interno |
| 14 | Actas de Seguimiento Externo |  |  |  | was named Kick Off Metting Externo |
| 15 | Aceptacion del Entregable - interacion 1 |  |  |  | was named Acta de Aceptacion de Entregables |

## Version 4 (saved 2013-04-25, file IFTC.PP_PMC.RE02_Crongrama_(v2.3) .mpp)

Note of the change: PP.PMC ACTUALIZADO

Last finish stays 2013-06-06. Complete tasks 23 → 20.

Added:

| ID | Task | Duration | Start | Finish | Constraint | Resources |
| --- | --- | --- | --- | --- | --- | --- |
| 6 | Actas de Reuniones | 1d | 2013-02-08 A | 2013-02-08 | finish no earlier than 2013-02-08 | Arnold Paico |
| 38 | Acta de Reuniones | 1d? | 2013-03-27 | 2013-03-27 |  |  |
| 39 | Informe Quincenal | 1d? | 2013-03-27 | 2013-03-27 |  |  |
| 44 | Desarrollo de logica de negocio Ajustado | 25d | 2013-04-19 | 2013-05-23 | finish no earlier than 2013-05-23 |  |

Removed: 13 Actas de Seguimiento Interno; 14 Actas de Seguimiento Externo; 64 Soporte

Changed:

| ID | Task | Start | Finish | Duration | Complete | Total float | Predecessors | Other |
| --- | --- | --- | --- | --- | --- | --- | --- | --- |
| 1 | **Sistema de Intranet de Alumnos - S.I.A** | 2013-02-05 A |  | 95d → 96d | 56% → 29% |  |  |  |
| 2 | **Iteracion 1** |  |  |  | 34% → 33% |  |  |  |
| 3 | **Planificación** |  |  |  | 29% → 25% |  |  |  |
| 12 | Desarrollo de Prototipos de Interfaces |  |  |  |  | 78d → 79d |  | was named Desarrollo de Prototipos Interfaces |
| 14 | Kick Off Metting Interno | 2013-03-25 → 2013-03-04 A (-21d) | 2013-03-25 → 2013-03-04 A (-21d) |  | 0% → 100% | 0d → none |  | constraint finish no earlier than 2013-03-25 → start no earlier than 2012-09-12 |
| 15 | Kick Off Metting Externo | 2013-03-26 → 2013-03-05 A (-21d) | 2013-03-26 → 2013-03-05 A (-21d) |  | 0% → 100% | 0d → none |  | constraint none → finish no earlier than 2012-09-13 |
| 16 | Acta de Aceptacion de Entregables |  |  |  |  |  | Actas de Seguimiento Externo → 15 | was named Aceptacion del Entregable - interacion 1 |
| 17 | **Iteracion 2** |  | 2013-03-26 → 2013-04-18 (+23d) | 18d → 36d | 63% → 32% |  |  |  |
| 24 | Informe Quincenal |  |  |  |  | 61d → 62d |  | was named Informe Semanal |
| 27 | **Ingeniería** |  | 2013-03-23 → 2013-04-18 (+26d) | 6d → 26d | 83% → 19% |  |  |  |
| 28 | Desarrollo de Logica de Negocio |  | 2013-03-23 → 2013-04-18 (+26d) | 6d → 26d | 83% → 19% | 55d → 36d |  | constraint finish no earlier than 2013-03-23 → finish no earlier than 2013-04-18 |
| 29 | **Evaluación del Cliente** |  |  |  | 33% → 99% |  |  |  |
| 30 | Acta de Aceptacion de Entregables |  |  |  |  |  | 15 → none |  |
| 31 | **Iteración 3** |  | 2013-04-11 → 2013-05-23 (+42d) | 13d → 43d | 47% → 17% |  |  |  |
| 43 | **Ingeniería** |  | 2013-04-09 A → 2013-05-23 (+44d) | 3d → 35d | 100% → 11% |  |  |  |
| 45 | Desarrollo de Persistencia de Datos |  |  |  |  |  |  | was named Desarrollo de Persistencia |
| 49 | **Iteración 4** | 2013-04-11 → 2013-05-24 A (+43d) | 2013-04-18 → 2013-06-06 (+49d) | 6d → 11d | 75% → 50% |  |  | was named Iteración 4(FaltaCorregir) |
| 50 | **Planificación** | 2012-11-14 A → 2013-05-24 A (+191d) | 2013-04-11 → 2013-05-29 (+48d) | 114d? → 5d | 67% → 60% | 5d → none |  |  |
| 51 | Métricas de Calidad | 2013-04-11 → 2013-05-24 (+43d) | 2013-04-11 → 2013-05-24 (+43d) | 1d? → 1d |  | 5d → 4d |  |  |
| 52 | Plantilla Ficha Indicador | 2013-04-11 → 2013-05-25 (+44d) | 2013-04-11 → 2013-05-25 (+44d) | 1d? → 1d |  | 5d → 9d | none → 51 | constraint none → start no earlier than 2013-05-25 |
| 53 | Manual de Usuario | 2012-11-14 A → 2013-05-27 A (+194d) | 2012-11-14 A → 2013-05-27 A (+194d) |  |  |  | none → 52 |  |
| 54 | Actas de Reuniones | 2012-11-15 A → 2013-05-28 A (+194d) | 2012-11-16 A → 2013-05-28 A (+193d) | 2d → 1d |  |  |  |  |
| 55 | Informe Quincenal | 2012-11-14 A → 2013-05-29 A (+196d) | 2012-11-14 A → 2013-05-29 A (+196d) |  |  |  | none → 54 | was named Informe Semanal |
| 56 | **Análisis de Riesgos** | 2012-11-19 A → 2013-05-25 A (+187d) | 2012-11-23 A → 2013-05-28 A (+186d) | 5d → 3d |  |  |  |  |
| 57 | Registro de Riesgos | 2012-11-19 A → 2013-05-25 A (+187d) | 2012-11-19 A → 2013-05-25 A (+187d) |  |  |  |  |  |
| 58 | Plan de Capacitación | 2012-11-19 A → 2013-05-27 A (+189d) | 2012-11-23 A → 2013-05-28 A (+186d) | 5d → 2d |  |  |  |  |
| 59 | **Ingeniería** | 2012-11-26 A → 2013-05-30 A (+185d) | 2012-12-11 A → 2013-06-05 (+176d) | 12d → 5d | 100% → 33% |  |  |  |
| 60 | Pruebas Unitarias | 2012-11-26 A → 2013-05-30 A (+185d) | 2012-11-29 A → 2013-05-30 A (+182d) | 4d → 1d |  |  |  |  |
| 61 | Pruebas Integrales | 2012-12-03 A → 2013-05-31 A (+179d) | 2012-12-05 A → 2013-05-31 (+177d) | 3d → 1d | 100% → 0% |  |  |  |
| 62 | Pruebas en Producción | 2012-12-06 A → 2013-06-01 A (+177d) | 2012-12-07 A → 2013-06-03 (+178d) |  | 100% → 0% |  |  | constraint finish no earlier than 2012-12-07 → finish no earlier than 2013-06-03 |
| 63 | Implementación | 2012-12-10 A → 2013-06-04 A (+176d) | 2012-12-11 A → 2013-06-05 (+176d) |  | 100% → 50% |  |  | constraint finish no earlier than 2012-12-21 → start no earlier than 2013-06-04 |
| 64 | **Evaluación del Cliente** | 2012-12-12 → 2013-06-06 (+176d) | 2012-12-18 → 2013-06-06 (+170d) | 5d → 1d |  |  |  |  |
| 65 | Acta de Conformidad de Capacitacion | 2012-12-12 → 2013-06-06 (+176d) | 2012-12-12 → 2013-06-06 (+176d) |  |  | 133d → 0d |  | constraint finish no earlier than 2012-12-12 → start no earlier than 2013-06-06 |
| 66 | Acta de Finalización del Proyecto | 2012-12-18 → 2013-06-06 (+170d) | 2012-12-18 → 2013-06-06 (+170d) |  |  | 129d → 0d |  | constraint finish no earlier than 2012-12-18 → start no earlier than 2013-06-06 |

## Version 5 (saved 2013-05-02, file IFTC.PP_PMC.RE02_Crongrama_(v2.3) .mpp)

Note of the change: ActualizadoAFEcha

Last finish stays 2013-06-06.

Changed:

| ID | Task | Other |
| --- | --- | --- |
| 53 | Manual de Sistema y Usuario | was named Manual de Usuario |

## Version 6 (saved 2013-05-07, file IFTC.PP_PMC.RE02_Crongrama_(v2.4).mpp)

Note of the change: Actualizacion

Last finish stays 2013-06-06.

Added:

| ID | Task | Duration | Start | Finish | Constraint |
| --- | --- | --- | --- | --- | --- |
| 6 | Metrica de Procentaje de Cumplimiento de Entregables | 1d | 2013-02-05 | 2013-02-05 |  |
| 9 | Informe Quincenal | 13d | 2013-02-26 | 2013-03-13 | start no earlier than 2013-02-26 |
| 25 | Metrica de Volatibilidad de Requerimientos | 2d | 2013-02-13 | 2013-02-14 | finish no earlier than 2013-02-14 |
| 28 | Informe Quincenal | 11d | 2013-04-01 | 2013-04-14 | finish no earlier than 2013-04-14 |
| 44 | Informe Quincenal | 12d | 2013-05-01 | 2013-05-16 | finish no earlier than 2013-05-16 |

Removed: 52 Plantilla Ficha Indicador

Changed:

| ID | Task | Start | Finish | Duration | Complete | Total float | Predecessors | Other |
| --- | --- | --- | --- | --- | --- | --- | --- | --- |
| 1 | **Sistema de Intranet de Alumnos - S.I.A** |  |  | 96d → 97d | 29% → 18% |  |  |  |
| 2 | **Iteracion 1** |  |  |  | 33% → 15% |  |  |  |
| 3 | **Planificación** |  |  |  | 25% → 5% |  |  |  |
| 7 | Actas de Reunion |  |  |  |  | 92d → 93d |  | was named Actas de Reuniones |
| 8 | Informe Quincenal | 2013-02-09 A → 2013-02-05 A (-4d) | 2013-02-09 → 2013-02-25 (+16d) | 1d → 18d |  | 91d → 79d |  | constraint finish no earlier than 2012-09-04 → finish no earlier than 2013-02-25 |
| 19 | **Iteracion 2** |  |  | 36d → 37d | 32% → 19% |  |  |  |
| 20 | **Planificación** |  |  |  | 56% → 14% |  |  |  |
| 26 | Acta de Reunion |  |  |  |  |  |  | was named Actas de Reuniones |
| 27 | Informe Quincenal | 2013-03-16 → 2013-03-14 (-2d) | 2013-03-16 → 2013-03-29 (+13d) | 1d → 14d |  | 62d → 52d |  | constraint finish no earlier than 2013-03-16 → finish no earlier than 2013-03-29 |
| 31 | **Ingeniería** |  |  | 26d → 27d |  |  |  |  |
| 35 | **Iteración 3** |  |  | 43d → 44d | 17% → 11% |  |  |  |
| 42 | Acta de Reuniones |  |  | 1d? → 1d |  |  |  |  |
| 43 | Informe Quincenal | 2013-03-27 → 2013-04-15 (+19d) | 2013-03-27 → 2013-04-30 (+34d) | 1d? → 12d |  | 5d → 28d |  | constraint none → start no earlier than 2013-04-15 |
| 48 | **Ingeniería** |  |  | 35d → 36d |  |  |  |  |
| 54 | **Iteración 4** |  |  |  | 50% → 53% |  |  |  |
| 55 | **Planificación** |  |  |  | 60% → 75% |  |  |  |
| 57 | Manual de Usuario |  |  |  |  |  | Plantilla Ficha Indicador → 56 | was named Manual de Sistema y Usuario |

## Version 7 (saved 2013-05-20, file IFTC.PP_PMC.RE02_Crongrama_(v2.4).mpp)

Note of the change: Actualizacion

Last finish stays 2013-06-06. Complete tasks 20 → 17.

Added:

| ID | Task | Duration | Start | Finish |
| --- | --- | --- | --- | --- |
| 60 | **Informes Quincenales** | 97d | 2013-02-05 | 2013-06-06 |
| 63 | **Actas de Reunion** | 87d | 2013-02-08 | 2013-05-28 |

Removed: 26 Acta de Reunion; 27 Informe Quincenal; 28 Informe Quincenal; 42 Acta de Reuniones; 43 Informe Quincenal; 44 Informe Quincenal; 59 Informe Quincenal

Changed:

| ID | Task | Start | Finish | Duration | Complete | Total float | Other |
| --- | --- | --- | --- | --- | --- | --- | --- |
| 1 | **Sistema de Intranet de Alumnos - S.I.A** |  |  |  | 18% → 24% |  |  |
| 2 | **Iteracion 1** |  |  |  | 15% → 34% |  |  |
| 3 | **Planificación** |  |  |  | 5% → 29% |  |  |
| 16 | **Iteracion 2** |  |  |  | 19% → 30% |  |  |
| 17 | **Planificación** |  |  |  | 14% → 44% |  |  |
| 29 | **Iteración 3** |  |  |  | 11% → 18% |  |  |
| 45 | **Iteración 4** |  |  |  | 53% → 46% |  |  |
| 46 | **Planificación** |  |  |  | 75% → 50% |  |  |
| 59 | Acta de Finalización del Proyecto |  |  |  |  |  | constraint start no earlier than 2013-06-06 → none |
| 61 | Informe Quincenal | 2013-02-05 A → 2013-02-05 |  |  |  |  | resources Arnold Paico → none |
| 62 | Informe Quincenal | 2013-02-26 → 2013-05-29 (+92d) | 2013-03-13 → 2013-05-29 (+77d) | 13d → 1d |  | 66d → 6d | constraint start no earlier than 2013-02-26 → finish no earlier than 2013-05-29 |
| 64 | Actas de Reunion | 2013-02-08 A → 2013-02-08 |  |  |  | 93d → 86d | constraint finish no earlier than 2013-02-08 → none; resources Arnold Paico → none |
| 65 | Actas de Reuniones | 2013-05-28 A → 2013-05-28 | 2013-05-28 A → 2013-05-28 |  | 100% → 0% | none → 7d | constraint finish no earlier than 2012-11-16 → start no earlier than 2013-05-28 |

## Version 8 (saved 2013-05-23, file IFTC.PP_PMC.RE02_Crongrama_(v2.4).mpp)

Note of the change: actualizacion de ronograma

Last finish stays 2013-06-06.

Removed: 61 Informe Quincenal; 62 Informe Quincenal; 64 Actas de Reunion; 65 Actas de Reuniones

Changed:

| ID | Task | Complete |
| --- | --- | --- |
| 1 | **Sistema de Intranet de Alumnos - S.I.A** | 24% → 11% |
