# WBS Detallado

How a schedule from MS Project changed from version to version. A marks actual dates.

## Version 1 (saved 2013-04-24)

Note of the change: IFTC_PP.PMC

| ID | WBS | Task | Duration | Start | Finish | Predecessors | Complete | Total float | Constraint |
| --- | --- | --- | --- | --- | --- | --- | --- | --- | --- |
| 1 | 1 | **Sistema de Intranet de Alumnos - S.I.A** | 96d | 2013-02-05 A | 2013-06-06 |  | 47% |  |  |
| 2 | 1.1 | **Iteracion 1** | 24d | 2013-02-05 A | 2013-03-05 |  | 33% |  |  |
| 3 | 1.1.1 | **Planificación** | 6d | 2013-02-05 A | 2013-02-11 |  | 25% |  |  |
| 4 |  | Plan de Proyecto | 4d | 2013-02-05 A | 2013-02-08 |  | 25% | 92d | finish no earlier than 2013-02-07 |
| 5 |  | Cronograma Detallado | 2d | 2013-02-08 A | 2013-02-09 |  | 50% | 91d | finish no earlier than 2013-02-09 |
| 6 |  | Actas de Reuniones | 1d | 2013-02-08 A | 2013-02-08 |  |  | 92d | finish no earlier than 2013-02-08 |
| 7 |  | Informe Quincenal | 1d | 2013-02-09 A | 2013-02-09 |  |  | 91d | finish no earlier than 2012-09-04 |
| 8 | 1.1.2 | **Analisis de Riesgos** | 1d | 2013-02-09 A | 2013-02-09 A |  | 100% |  |  |
| 9 |  | Registro de Riesgos | 1d | 2013-02-09 A | 2013-02-09 A |  | 100% |  | finish no earlier than 2013-02-09 |
| 10 | 1.1.3 | **Ingeniería** | 12d | 2013-02-11 A | 2013-02-23 |  | 18% |  |  |
| 11 |  | Modelaje Base de Datos | 6d | 2013-02-11 A | 2013-02-16 |  | 8% | 85d | finish no earlier than 2013-02-16 |
| 12 |  | Desarrollo de Prototipos de Interfaces | 8d | 2013-02-15 A | 2013-02-23 |  | 25% | 79d | finish no earlier than 2013-02-23 |
| 13 | 1.1.4 | **Evaluación del Cliente** | 2d | 2013-03-04 A | 2013-03-05 |  | 99% |  |  |
| 14 |  | Kick Off Metting Interno | 1d | 2013-03-04 A | 2013-03-04 A |  | 100% |  | start no earlier than 2012-09-12 |
| 15 |  | Kick Off Metting Externo | 1d | 2013-03-05 A | 2013-03-05 A | 14 | 100% |  | finish no earlier than 2012-09-13 |
| 16 |  | Acta de Aceptacion de Entregables | 1d | 2013-03-05 A | 2013-03-05 A | 15 | 100% |  | finish no earlier than 2013-02-21 |
| 17 | 1.2 | **Iteracion 2** | 18d | 2013-03-06 | 2013-03-26 |  | 71% |  |  |
| 18 | 1.2.1 | **Planificación** | 27d | 2013-02-13 A | 2013-03-16 |  | 56% |  |  |
| 19 |  | Lista Maestra de Requerimientos | 4d | 2013-03-06 A | 2013-03-09 |  | 25% | 68d | finish no earlier than 2013-03-09 |
| 20 |  | Matriz de Trazabilidad | 1d | 2013-03-11 A | 2013-03-11 A | 19 | 100% |  | finish no earlier than 2012-09-16 |
| 21 |  | Casos de Uso | 1d | 2013-03-12 A | 2013-03-12 A |  | 100% |  | finish no earlier than 2012-09-15 |
| 22 |  | Diagrama de Casos de Uso | 1d | 2013-02-13 A | 2013-02-13 A | 21 | 100% |  | finish no earlier than 2012-09-15 |
| 23 |  | Actas de Reuniones | 1d | 2013-03-15 A | 2013-03-15 A |  | 100% |  | finish no earlier than 2012-09-18 |
| 24 |  | Informe Quincenal | 1d | 2013-03-16 | 2013-03-16 |  |  | 62d | finish no earlier than 2013-03-16 |
| 25 | 1.2.2 | **Análisis de Riesgos** | 1d | 2013-03-14 A | 2013-03-14 A |  | 100% |  |  |
| 26 |  | Registros de Riesgos | 1d | 2013-03-14 A | 2013-03-14 A |  | 100% |  | finish no earlier than 2012-09-20 |
| 27 | 1.2.3 | **Ingeniería** | 6d | 2013-03-18 A | 2013-03-23 |  | 83% |  |  |
| 28 |  | Desarrollo de Logica de Negocio | 6d | 2013-03-18 A | 2013-03-23 |  | 83% | 56d | finish no earlier than 2013-03-23 |
| 29 | 1.2.4 | **Evaluación del Cliente** | 2d | 2013-03-25 A | 2013-03-26 |  | 99% |  |  |
| 30 |  | Acta de Aceptacion de Entregables | 1d | 2013-03-26 A | 2013-03-26 A |  | 100% |  | finish no earlier than 2012-10-09 |
| 31 | 1.3 | **Iteración 3** | 13d | 2013-03-27 A | 2013-04-11 |  | 41% |  |  |
| 32 | 1.3.1 | **Planificación** | 6d | 2013-03-27 A | 2013-04-02 |  |  |  |  |
| 33 |  | Herramienta de Gestión | 3d | 2013-03-27 | 2013-03-29 |  |  | 0d |  |
| 34 |  | Numero de no Conformidades (Metrica) | 1d | 2013-03-30 | 2013-03-30 | 33 |  | 0d | start no earlier than 2013-03-30 |
| 35 |  | Checklist de Aseguramiento de Calidad | 1d | 2013-04-01 | 2013-04-01 | 34 |  | 0d |  |
| 36 |  | Matriz de Seguimiento | 1d | 2013-04-02 | 2013-04-02 | 35 |  | 0d |  |
| 37 |  | Lista Maestra de Requerimientos Actualizada | 1d | 2013-03-28 A | 2013-03-28 |  |  | 52d | finish no earlier than 2013-03-27 |
| 38 |  | Acta de Reuniones | 1d? | 2013-03-27 | 2013-03-27 |  |  | 5d |  |
| 39 |  | Informe Quincenal | 1d? | 2013-03-27 | 2013-03-27 |  |  | 5d |  |
| 40 | 1.3.2 | **Análisis de Riesgos** | 3d | 2013-04-03 A | 2013-04-05 |  | 67% |  |  |
| 41 |  | Registros de Riesgos | 1d | 2013-04-03 A | 2013-04-03 A |  | 100% |  | finish no earlier than 2013-04-03 |
| 42 |  | Planes de Prueba | 2d | 2013-04-04 A | 2013-04-05 |  | 50% | 45d | finish no earlier than 2012-10-17 |
| 43 | 1.3.3 | **Ingeniería** | 3d | 2013-04-05 A | 2013-04-09 A |  | 100% |  |  |
| 44 |  | Desarrollo de Persistencia de Datos | 3d | 2013-04-05 A | 2013-04-09 A |  | 100% |  | finish no earlier than 2012-11-08 |
| 45 | 1.3.4 | **Evaluación del Cliente** | 1d | 2013-04-11 A | 2013-04-11 A |  | 100% |  |  |
| 46 |  | Acta de Aceptacion de Entregables | 1d | 2013-04-11 A | 2013-04-11 A |  | 100% |  | finish no earlier than 2012-11-09 |
| 47 |  | Pruebas Funcionales | 1d | 2013-04-11 A | 2013-04-11 A |  | 100% |  | finish no earlier than 2012-11-13 |
| 48 | 1.4 | **Iteración 4** | 11d | 2013-05-24 A | 2013-06-06 |  | 50% |  |  |
| 49 | 1.4.1 | **Planificación** | 5d | 2013-05-24 A | 2013-05-29 |  | 60% |  |  |
| 50 |  | Métricas de Calidad | 1d | 2013-05-24 | 2013-05-24 |  |  | 4d |  |
| 51 |  | Plantilla Ficha Indicador | 1d | 2013-05-25 | 2013-05-25 | 50 |  | 9d | start no earlier than 2013-05-25 |
| 52 |  | Manual de Usuario | 1d | 2013-05-27 A | 2013-05-27 A | 51 | 100% |  | finish no earlier than 2012-11-15 |
| 53 |  | Actas de Reuniones | 1d | 2013-05-28 A | 2013-05-28 A |  | 100% |  | finish no earlier than 2012-11-16 |
| 54 |  | Informe Quincenal | 1d | 2013-05-29 A | 2013-05-29 A | 53 | 100% |  | finish no earlier than 2012-11-15 |
| 55 | 1.4.2 | **Análisis de Riesgos** | 3d | 2013-05-25 A | 2013-05-28 A |  | 100% |  |  |
| 56 |  | Registro de Riesgos | 1d | 2013-05-25 A | 2013-05-25 A |  | 100% |  | start no earlier than 2012-11-19 |
| 57 |  | Plan de Capacitación | 2d | 2013-05-27 A | 2013-05-28 A |  | 100% |  | finish no earlier than 2012-11-23 |
| 58 | 1.4.3 | **Ingeniería** | 5d | 2013-05-30 A | 2013-06-05 |  | 33% |  |  |
| 59 |  | Pruebas Unitarias | 1d | 2013-05-30 A | 2013-05-30 A |  | 100% |  | finish no earlier than 2012-11-30 |
| 60 |  | Pruebas Integrales | 1d | 2013-05-31 A | 2013-05-31 |  |  |  | finish no earlier than 2012-12-05 |
| 61 |  | Pruebas en Producción | 2d | 2013-06-01 A | 2013-06-03 |  |  |  | finish no earlier than 2013-06-03 |
| 62 |  | Implementación | 2d | 2013-06-04 A | 2013-06-05 |  | 50% |  | start no earlier than 2013-06-04 |
| 63 | 1.4.4 | **Evaluación del Cliente** | 1d | 2013-06-06 | 2013-06-06 |  |  |  |  |
| 64 |  | Acta de Conformidad de Capacitacion | 1d | 2013-06-06 | 2013-06-06 |  |  | 0d | start no earlier than 2013-06-06 |
| 65 |  | Acta de Finalización del Proyecto | 1d | 2013-06-06 | 2013-06-06 |  |  | 0d | start no earlier than 2013-06-06 |

## Version 2 (saved 2013-04-25)

Note of the change: Plan-cronograma

Last finish stays 2013-06-06.

Changed:

| ID | Task | Other |
| --- | --- | --- |
| 14 | Acta de Seguimiento Interno | was named Kick Off Metting Interno |
| 15 | Acta de SeguimientoExterno | was named Kick Off Metting Externo |

## Version 3 (saved 2013-04-25)

Note of the change: REgistro de Riesgos Actualizado

Last finish stays 2013-06-06. Complete tasks 20 → 19.

Removed: 6 Actas de Reuniones; 23 Actas de Reuniones; 24 Informe Quincenal

Changed:

| ID | Task | Complete | Other |
| --- | --- | --- | --- |
| 2 | **Iteracion 1** | 33% → 34% |  |
| 3 | **Planificación** | 25% → 29% |  |
| 16 | **Iteracion 2** | 71% → 73% |  |
| 17 | **Flujo de Trabajo de Diseño** | 56% → 57% | was named Planificación |

## Version 4 (saved 2013-04-25)

Note of the change: Cronograma Actualizada

Last finish stays 2013-06-06. Complete tasks 19 → 8.

Added:

| ID | Task | Duration | Start | Finish | Predecessors | Constraint |
| --- | --- | --- | --- | --- | --- | --- |
| 18 | Documento de Arquitectura de Software | 1d? | 2013-02-13 | 2013-02-13 |  |  |
| 23 | Matriz de Trazabilidad Actualizada | 1d? | 2013-03-14 | 2013-03-14 |  |  |
| 29 | Lista Maestra de Requerimientos | 1d? | 2013-04-01 | 2013-04-01 | 28 |  |
| 35 | Software en Producción | 1d | 2013-05-27 A | 2013-05-27 A | 34 | finish no earlier than 2012-11-15 |

Removed: 19 Matriz de Trazabilidad; 24 Ingeniería; 25 Desarrollo de Logica de Negocio; 26 Evaluación del Cliente; 27 Acta de Aceptacion de Entregables; 33 Matriz de Seguimiento; 34 Lista Maestra de Requerimientos Actualizada; 35 Acta de Reuniones; 36 Informe Quincenal; 37 Análisis de Riesgos; 38 Registros de Riesgos; 39 Planes de Prueba; 40 Ingeniería; 41 Desarrollo de Persistencia de Datos; 42 Evaluación del Cliente; 43 Acta de Aceptacion de Entregables; 44 Pruebas Funcionales; 47 Métricas de Calidad; 50 Actas de Reuniones; 51 Informe Quincenal; 52 Análisis de Riesgos; 53 Registro de Riesgos; 54 Plan de Capacitación; 55 Ingeniería; 56 Pruebas Unitarias; 57 Pruebas Integrales; 58 Pruebas en Producción; 59 Implementación; 60 Evaluación del Cliente; 61 Acta de Conformidad de Capacitacion; 62 Acta de Finalización del Proyecto

Changed:

| ID | Task | Start | Finish | Duration | Complete | Total float | Predecessors | Other |
| --- | --- | --- | --- | --- | --- | --- | --- | --- |
| 1 | **Sistema de Intranet de Alumnos - S.I.A** |  |  |  | 47% → 31% |  |  |  |
| 16 | **Iteracion 2** |  |  |  | 73% → 50% |  |  |  |
| 17 | **Flujo de Trabajo de Diseño** |  |  |  | 57% → 67% |  |  |  |
| 21 | **Flujo de Trabajos de Requerimientos** |  | 2013-03-14 A → 2013-03-14 |  | 100% → 33% |  |  | was named Análisis de Riesgos |
| 22 | Lista Maestra de Requerimientos | 2013-03-06 A → 2013-03-14 (+8d) | 2013-03-09 → 2013-03-14 (+5d) | 4d → 1d? | 25% → 0% | 68d → 0d |  | constraint finish no earlier than 2013-03-09 → none; resources Gino Guzman → none |
| 24 | Plan de Pruebas |  |  |  |  |  |  | was named Registros de Riesgos |
| 25 | **Iteración 3** | 2013-03-27 A → 2013-03-27 |  |  | 41% → 0% |  |  |  |
| 26 | **Flujo de Trabajo de Requerimientos** | 2013-03-27 A → 2013-03-27 |  |  |  |  |  | was named Planificación |
| 27 | Caso de Uso |  |  |  |  |  |  | was named Herramienta de Gestión |
| 28 | Diagrama de Casos de Uso |  |  |  |  |  |  | was named Numero de no Conformidades (Metrica) |
| 30 | Matriz de Trazabilidad Actualizada | 2013-04-01 → 2013-04-02 (+1d) | 2013-04-01 → 2013-04-02 (+1d) |  |  |  | 28 → 29 | was named Checklist de Aseguramiento de Calidad |
| 31 | **Iteración 4** |  |  |  | 50% → 33% |  |  |  |
| 32 | **Flujo de Trabajo de Distribucion** |  |  |  | 60% → 33% |  |  | was named Planificación |
| 33 | Manual de Usuario | 2013-05-27 A → 2013-05-24 (-3d) | 2013-05-27 A → 2013-05-24 (-3d) |  | 100% → 0% | none → 4d | 34 → none | constraint finish no earlier than 2012-11-15 → none |
| 34 | Acta de conformidad de Capacitacion |  |  |  |  |  | Métricas de Calidad → 33 | was named Plantilla Ficha Indicador |
